# cronograma

Schedule from MS Project, 2017-09-24 to 2017-12-19, A marks actual dates.

## Calendars

- Estándar: Mon-Fri 09:00-13:00, 15:00-19:00; Sat-Sun off.

## Resources

| Resource |
| --- |
| Eduardo Torrado |
| Yesid |
| David Medina |

## Schedule

| ID | WBS | Task | Duration | Start | Finish | Predecessors | Complete | Remaining | Total slack | Free slack | Resources | Work | Actual work |
| --- | --- | --- | --- | --- | --- | --- | --- | --- | --- | --- | --- | --- | --- |
| 1 | 1 | **ForoUdec** | 61d | 2017-09-24 13:00 A | 2017-12-19 01:05 |  | 21% | 48.44d | 0d |  |  | 326.25h | 48.15h |
| 2 | 1.1 | **Primera Iteracion** | 32.88d | 2017-09-24 13:00 A | 2017-11-08 18:01 |  | 40% | 19.85d | 0.62d | 0d |  | 161.41h | 48.15h |
| 3 | 1.1.1 | **Planeneacion** | 5d | 2017-09-24 13:00 A | 2017-09-30 23:04 A |  | 100% |  |  |  |  | 20.59h | 20.59h |
| 4 | 1.1.1.1 | Definicion de requisitos | 10h | 2017-09-24 13:00 A | 2017-09-25 14:01 A |  | 100% |  |  |  | David Medina [40%]; Eduardo Torrado [30%]; Yesid [30%] | 4.3h | 4.3h |
| 5 | 1.1.1.2 | Analisis y Diseño de casos de uso | 10h | 2017-09-25 14:01 A | 2017-09-26 18:01 A | 4 | 100% |  |  |  | David Medina [10%]; Eduardo Torrado [10%]; Yesid [80%] | 2.19h | 2.19h |
| 6 | 1.1.1.3 | Análsis y Diseño del Modelo de datos | 10h | 2017-09-26 18:01 A | 2017-09-28 13:02 A | 5 | 100% |  |  |  | David Medina [80%]; Eduardo Torrado [10%]; Yesid [10%] | 4.1h | 4.1h |
| 7 | 1.1.1.4 | Diseño de clases | 12h | 2017-09-28 13:02 A | 2017-09-29 18:03 A | 6 | 100% |  |  |  | David Medina [80%]; Eduardo Torrado [10%]; Yesid [10%] | 4.3h | 4.3h |
| 8 | 1.1.1.5 | Análsis y Diseño del Modelo secuencia | 12h | 2017-09-29 18:03 A | 2017-09-30 23:04 A | 7 | 100% |  |  |  | David Medina [40%]; Eduardo Torrado [30%]; Yesid [30%] | 5.7h | 5.7h |
| 9 | 1.1.2 | **Diseño** | 8d | 2017-09-30 23:04 A | 2017-10-11 19:00 | 3 | 31% | 5.55d | 2d |  |  | 46.55h | 12.56h |
| 10 | 1.1.2.1 | **Diseño de Interfaces del usuario** | 6d | 2017-09-30 23:04 A | 2017-10-10 01:00 |  | 37% | 3.8d | 2d | 0.5d |  | 38.55h | 12.56h |
| 11 | 1.1.2.1.1 | **Diseño plantillas** | 2d | 2017-09-30 23:04 A | 2017-10-03 19:00 A |  | 100% |  |  |  |  | 12.56h | 12.56h |
| 12 | 1.1.2.1.1.1 | plantilla Pagina Principal- master | 5h | 2017-09-30 23:04 A | 2017-10-01 23:05 A |  | 100% |  |  |  | David Medina [50%]; Yesid [50%] | 4h | 4h |
| 13 | 1.1.2.1.1.2 | Plantilla Foro Universidad -master | 6h | 2017-10-01 23:05 A | 2017-10-03 00:07 A | 12 | 100% |  |  |  | David Medina [50%]; Yesid [50%] | 4.56h | 4.56h |
| 14 | 1.1.2.1.1.3 | Plantilla Administrador -master | 4h | 2017-10-03 13:00 A | 2017-10-03 19:00 A | 13 | 100% |  |  |  | Eduardo Torrado | 4h | 4h |
| 15 | 1.1.2.1.2 | **Diseño Interfaz ingreso** | 1d | 2017-10-03 21:00 | 2017-10-04 21:01 | 11 |  |  | 2d | 0.5d |  | 4h |  |
| 16 | 1.1.2.1.2.1 | Diseño login | 2h | 2017-10-03 21:00 | 2017-10-03 23:00 |  |  |  | 2d | 0d | Yesid | 2h |  |
| 17 | 1.1.2.1.2.2 | Diseño registro | 2h | 2017-10-03 23:00 | 2017-10-04 21:01 | 16 |  |  | 2d |  | Yesid | 2h |  |
| 18 | 1.1.2.1.3 | **Diseño interfaz perfil** | 1d | 2017-10-05 13:00 | 2017-10-06 15:00 | 15 |  |  | 0.5d |  |  | 6h |  |
| 19 | 1.1.2.1.3.1 | ver perfil | 3h | 2017-10-05 13:00 | 2017-10-05 18:00 |  |  |  | 0.25d | 0d | Eduardo Torrado | 3h |  |
| 20 | 1.1.2.1.3.2 | Editar perfil | 3h | 2017-10-05 18:00 | 2017-10-06 15:00 | 19 |  |  | 0.5d |  | Eduardo Torrado | 3h |  |
| 21 | 1.1.2.1.4 | **Diseño post** | 0d | 2017-10-06 21:00 | 2017-10-08 02:00 | 18 |  |  | 0d |  |  | 8h |  |
| 22 | 1.1.2.1.4.1 | Diseño intefaz crear post | 4h | 2017-10-06 21:00 | 2017-10-07 02:00 |  |  |  | 0d |  | David Medina | 4h |  |
| 23 | 1.1.2.1.4.2 | Diseño interfaz Modificar Post | 4h | 2017-10-07 21:00 | 2017-10-08 02:00 | 22 |  |  | 1d |  | David Medina | 4h |  |
| 24 | 1.1.2.1.5 | **Diseño vista post** | 1d | 2017-10-08 21:00 | 2017-10-10 01:00 | 21 |  |  | 2d |  |  | 7.99h |  |
| 25 | 1.1.2.1.5.1 | vista post | 4h | 2017-10-08 21:00 | 2017-10-09 01:01 |  |  |  | 2d | 0d | David Medina [50%]; Yesid [50%] | 3.5h |  |
| 26 | 1.1.2.1.5.2 | comentarios | 2h | 2017-10-09 01:01 | 2017-10-09 22:01 | 25 |  |  | 2d | 0d | David Medina [50%]; Yesid [50%] | 1.51h |  |
| 27 | 1.1.2.1.5.3 | puntuacion | 2h | 2017-10-09 22:01 | 2017-10-10 01:00 | 26 |  |  | 2d |  | David Medina; Yesid | 2.98h |  |
| 28 | 1.1.2.2 | Diseño funciones BBDD | 8h | 2017-10-10 13:00 | 2017-10-11 19:00 | 10 |  |  | 2d |  | Eduardo Torrado | 8h |  |

Notes:
- 1: La Fecha De inicio no se pudo acomodar con la fecha real en que se inicio el proyecto que fue el 11 de sep

| ID | WBS | Task | Duration | Start | Finish | Predecessors | Complete | Remaining | Total slack | Resources | Work | Actual work |
| --- | --- | --- | --- | --- | --- | --- | --- | --- | --- | --- | --- | --- |
| 29 | 1.1.3 | **Construccion** | 16d | 2017-10-13 21:00 A | 2017-11-07 02:00 | 9 | 15% | 13.53d | 0d |  | 88.67h | 15h |
| 30 | 1.1.3.1 | **Desarrollo de la master page** | 4d | 2017-10-13 21:00 A | 2017-10-19 22:01 A |  | 100% |  |  |  | 15h | 15h |
| 31 | 1.1.3.1.1 | Master usuario normal | 5h | 2017-10-13 21:00 A | 2017-10-14 22:00 A |  | 100% |  |  | David Medina | 5h | 5h |
| 32 | 1.1.3.1.2 | Master usuario de la universidad | 5h | 2017-10-16 13:00 A | 2017-10-17 14:00 A | 31 | 100% |  |  | Eduardo Torrado | 5h | 5h |
| 33 | 1.1.3.1.3 | Master Administrador | 5h | 2017-10-18 21:00 A | 2017-10-19 22:01 A | 32 | 100% |  |  | Yesid | 5h | 5h |
| 34 | 1.1.3.2 | **Desarrollo de la interfaz de ingreso** | 0.5d | 2017-10-20 13:00 | 2017-10-22 14:00 | 30 |  |  | 0d |  | 9h |  |
| 35 | 1.1.3.2.1 | Registro | 6h | 2017-10-20 13:00 | 2017-10-21 15:00 |  |  |  | 0d | Eduardo Torrado | 6h |  |
| 36 | 1.1.3.2.2 | logn | 3h | 2017-10-21 17:00 | 2017-10-22 14:00 | 35 |  |  | 0d | Eduardo Torrado | 3h |  |
| 37 | 1.1.3.3 | **Desarrollo de la interfaz de Post** | 6d | 2017-10-22 21:00 | 2017-10-30 22:08 | 34 |  |  | 0d |  | 32.67h |  |
| 38 | 1.1.3.3.1 | Desarrollo interfaz Crear Post | 10h | 2017-10-22 21:00 | 2017-10-24 21:02 |  |  |  | 0d | David Medina [50%]; Yesid [50%] | 8.02h |  |
| 39 | 1.1.3.3.2 | Desarrollo interfaz Modifica Post | 10h | 2017-10-24 21:02 | 2017-10-26 21:04 | 38 |  |  | 0d | David Medina [50%]; Yesid [50%] | 8.02h |  |
| 40 | 1.1.3.3.3 | Desarrollo intefaz Vista post | 10h | 2017-10-26 21:04 | 2017-10-28 21:06 | 39 |  |  | 0d | David Medina [50%]; Yesid [50%] | 8.02h |  |
| 41 | 1.1.3.3.4 | agregar Coemntario | 8h | 2017-10-28 21:06 | 2017-10-30 00:08 | 40 |  |  | 0d | David Medina [60%]; Yesid [40%] | 6.42h |  |
| 42 | 1.1.3.3.5 | Interfaz de Puntuacion | 3h | 2017-10-30 00:08 | 2017-10-30 22:08 | 41 |  |  | 0d | David Medina [20%]; Yesid [80%] | 2.2h |  |
| 43 | 1.1.3.4 | comprobaciones BBDD | 8h | 2017-10-31 13:00 | 2017-11-01 19:00 | 37 |  |  | 0d | Eduardo Torrado | 8h |  |
| 44 | 1.1.3.5 | **ingreso** | 1.5d | 2017-11-02 13:00 | 2017-11-04 19:00 | 43 |  |  | 0d |  | 12h |  |
| 45 | 1.1.3.5.1 | **Comprobacion nuevo ingreso** | 1.5d | 2017-11-02 13:00 | 2017-11-04 14:00 |  |  |  | 0d |  | 9h |  |
| 46 | 1.1.3.5.1.1 | Lectura de datos y procesado imágenes | 5h | 2017-11-02 13:00 | 2017-11-03 14:00 |  |  |  | 0d | Eduardo Torrado | 5h |  |
| 47 | 1.1.3.5.1.2 | Comprobación de resultados en la BBDD y en la interfaz de usuario | 4h | 2017-11-03 14:00 | 2017-11-04 14:00 | 46 |  |  | 0d | Eduardo Torrado | 4h |  |
| 48 | 1.1.3.5.2 | Validacion de inicio de sesion | 3h | 2017-11-04 14:00 | 2017-11-04 19:00 | 45 |  |  | 0d | Eduardo Torrado | 3h |  |
| 49 | 1.1.3.6 | **creacion de post** | 1d | 2017-11-04 21:00 | 2017-11-07 02:00 | 44 |  |  | 0d |  | 12h |  |
| 50 | 1.1.3.6.1 | Lectura de datos y procesado del post | 6h | 2017-11-04 21:00 | 2017-11-05 23:00 |  |  |  | 0d | David Medina | 6h |  |
| 51 | 1.1.3.6.2 | Comprobación de resultados en la BBDD y en la interfaz de usuario | 6h | 2017-11-06 00:00 | 2017-11-07 02:00 | 50 |  |  | 0d | David Medina | 6h |  |
| 52 | 1.1.4 | **Entrega** | 1.88d | 2017-11-07 02:00 | 2017-11-08 18:01 | 29 |  |  | 0.5d |  | 5.6h |  |
| 53 | 1.1.4.1 | comprobacion de resultados | 4h | 2017-11-07 02:00 | 2017-11-07 19:00 |  |  |  | 0d | David Medina [30%]; Eduardo Torrado [40%]; Yesid [30%] | 1.6h |  |
| 54 | 1.1.4.2 | generacion de errores o fallos | 4h | 2017-11-07 19:00 | 2017-11-08 01:01 | 53 |  |  | 0d | David Medina [30%]; Eduardo Torrado [30%]; Yesid [40%] | 2.5h |  |
| 55 | 1.1.4.3 | Correcciones de fallos | 4h | 2017-11-08 01:01 | 2017-11-08 18:01 | 54 |  |  | 0.5d | David Medina [30%]; Eduardo Torrado [40%]; Yesid [30%] | 1.5h |  |

| ID | WBS | Task | Duration | Start | Finish | Predecessors | Total slack | Free slack | Resources | Work |
| --- | --- | --- | --- | --- | --- | --- | --- | --- | --- | --- |
| 56 | 1.2 | **Segunda iteracion** | 19.12d | 2017-11-08 18:01 | 2017-12-06 00:03 | 2 | 0.62d | 0d |  | 113.44h |
| 57 | 1.2.1 | **Planeneacion** | 1.12d | 2017-11-08 18:01 | 2017-11-09 22:02 |  | 0.62d | 0d |  | 1.93h |
| 58 | 1.2.1.1 | Definicion de requisitos | 3h | 2017-11-08 18:01 | 2017-11-09 17:01 |  | 0.25d | 0d | David Medina [40%]; Eduardo Torrado [30%]; Yesid [30%] | 0.9h |
| 59 | 1.2.1.2 | Afinamiento a los Casos de uso | 2h | 2017-11-09 17:01 | 2017-11-09 22:02 | 58 | 0.25d |  | David Medina [80%]; Eduardo Torrado [10%]; Yesid [10%] | 1.03h |
| 60 | 1.2.2 | **Diseño** | 6d | 2017-11-09 22:02 | 2017-11-19 19:00 | 57 | 0d |  |  | 40h |
| 61 | 1.2.2.1 | **Diseño de Interfaces del usuario** | 1d | 2017-11-09 22:02 | 2017-11-11 01:02 |  | 0d |  |  | 6h |
| 62 | 1.2.2.1.1 | Diseño interfaz home | 6h | 2017-11-09 22:02 | 2017-11-11 01:02 |  | 0d |  | David Medina | 6h |
| 63 | 1.2.2.2 | **Diseño interfaz perfil** | 0d | 2017-11-11 01:02 | 2017-11-12 22:02 | 61 | 0d |  |  | 6h |
| 64 | 1.2.2.2.1 | ver perfil | 3h | 2017-11-11 01:02 | 2017-11-12 00:02 |  | 0d |  | David Medina | 3h |
| 65 | 1.2.2.2.2 | Editar perfil | 3h | 2017-11-12 00:02 | 2017-11-12 22:02 | 64 | 0d |  | David Medina | 3h |
| 66 | 1.2.2.3 | **Diseño post** | 1d | 2017-11-13 13:00 | 2017-11-14 15:00 | 63 | 0.25d |  |  | 6h |
| 67 | 1.2.2.3.1 | Diseño intefaz crear post | 3h | 2017-11-13 13:00 | 2017-11-13 18:00 |  | 0.25d | 0d | Eduardo Torrado | 3h |
| 68 | 1.2.2.3.2 | Diseño interfaz Modificar Post | 3h | 2017-11-13 18:00 | 2017-11-14 15:00 | 67 | 0.5d |  | Eduardo Torrado | 3h |
| 69 | 1.2.2.4 | **Diseño vista post** | 1d | 2017-11-14 21:00 | 2017-11-15 23:01 | 66 | 0d |  |  | 6h |
| 70 | 1.2.2.4.1 | vista post | 3h | 2017-11-14 21:00 | 2017-11-15 00:01 |  | 0d |  | Yesid | 3h |
| 71 | 1.2.2.4.2 | comentarios | 2h | 2017-11-15 00:01 | 2017-11-15 22:01 | 70 | 0d |  | Yesid | 2h |
| 72 | 1.2.2.4.3 | puntuacion | 1h | 2017-11-15 22:01 | 2017-11-15 23:01 | 71 | 0d |  | Yesid | 1h |
| 73 | 1.2.2.5 | Diseño funciones BBDD | 16h | 2017-11-16 13:00 | 2017-11-19 19:00 | 69 | 0d |  | Eduardo Torrado | 16h |
| 74 | 1.2.3 | **Construccion** | 11d | 2017-11-19 21:00 | 2017-12-04 23:01 | 60 | 0d |  |  | 67.2h |
| 75 | 1.2.3.1 | **Desarrollo de la interfaz home** | 2d | 2017-11-19 21:00 | 2017-11-22 02:00 |  | 0d |  |  | 12h |
| 76 | 1.2.3.1.1 | pagina principal | 12h | 2017-11-19 21:00 | 2017-11-22 02:00 |  | 0d |  | David Medina | 12h |
| 77 | 1.2.3.2 | **Desarrollo de la interfaz de Post** | 2.5d | 2017-11-22 13:00 | 2017-11-25 23:03 | 75 | 0d |  |  | 15.2h |
| 78 | 1.2.3.2.1 | Desarrollo interfaz Crear Post | 20h | 2017-11-22 13:00 | 2017-11-24 21:02 |  | 0d |  | Eduardo Torrado [60%]; Yesid [40%] | 10.4h |
| 79 | 1.2.3.2.2 | Desarrollo interfaz Modifica Post | 10h | 2017-11-24 21:02 | 2017-11-25 23:03 | 78 | 0d |  | Eduardo Torrado [60%]; Yesid [40%] | 4.8h |

| ID | WBS | Task | Duration | Start | Finish | Predecessors | Total slack | Free slack | Resources | Work |
| --- | --- | --- | --- | --- | --- | --- | --- | --- | --- | --- |
| 80 | 1.2.3.3 | **Desarrollo intefaz Vista post** | 3d | 2017-11-26 00:00 | 2017-11-30 02:00 | 77 | 0d |  |  | 18h |
| 81 | 1.2.3.3.1 | agregar Coemntario | 10h | 2017-11-26 00:00 | 2017-11-28 02:00 |  | 0d |  | David Medina | 10h |
| 82 | 1.2.3.3.2 | Interfaz de Puntuacion | 8h | 2017-11-28 21:00 | 2017-11-30 02:00 | 81 | 0d |  | David Medina | 8h |
| 83 | 1.2.3.4 | **comprobaciones BBDD** | 1.5d | 2017-11-30 13:00 | 2017-12-03 19:00 | 80 | 0d |  |  | 16h |
| 84 | 1.2.3.4.1 | validacion de ingreso al post dela unversidad | 2h | 2017-11-30 13:00 | 2017-11-30 15:00 |  | 0d |  | Eduardo Torrado | 2h |
| 85 | 1.2.3.4.2 | **ingreso** | 1.25d | 2017-11-30 17:00 | 2017-12-03 15:00 | 84 | 0d |  |  | 12h |
| 86 | 1.2.3.4.2.1 | **Comprobacion nuevo ingreso** | 1.25d | 2017-11-30 17:00 | 2017-12-01 19:00 |  | 0d |  |  | 6h |
| 87 | 1.2.3.4.2.1.1 | Lectura de datos y procesado imágenes | 6h | 2017-11-30 17:00 | 2017-12-01 19:00 |  | 0d |  | Eduardo Torrado | 6h |
| 88 | 1.2.3.4.2.2 | Comprobación de resultados en la BBDD y en la interfaz de usuario | 6h | 2017-12-02 13:00 | 2017-12-03 15:00 | 86 | 0d |  | Eduardo Torrado | 6h |
| 89 | 1.2.3.4.3 | Validacion de inicio de sesion | 2h | 2017-12-03 17:00 | 2017-12-03 19:00 | 85 | 0d |  | Eduardo Torrado | 2h |
| 90 | 1.2.3.5 | **creacion de post** | 1d | 2017-12-03 21:00 | 2017-12-04 23:01 | 83 | 0d |  |  | 6h |
| 91 | 1.2.3.5.1 | Lectura de datos y procesado del post | 4h | 2017-12-03 21:00 | 2017-12-04 21:01 |  | 0d |  | Yesid | 4h |
| 92 | 1.2.3.5.2 | Comprobación de resultados en la BBDD y en la interfaz de usuario | 2h | 2017-12-04 21:01 | 2017-12-04 23:01 | 91 | 0d |  | Yesid | 2h |
| 93 | 1.2.4 | **Entrega** | 1d | 2017-12-04 23:01 | 2017-12-06 00:03 | 74 | 0.87d |  |  | 4.32h |
| 94 | 1.2.4.1 | comprobacion de resultados | 4h | 2017-12-04 23:01 | 2017-12-05 14:02 |  | 0.5d | 0d | David Medina [40%]; Eduardo Torrado [30%]; Yesid [30%] | 1.7h |
| 95 | 1.2.4.2 | generacion de errores o fallos | 4h | 2017-12-05 14:02 | 2017-12-05 22:02 | 94 | 0.5d | 0d | David Medina [40%]; Eduardo Torrado [30%]; Yesid [30%] | 1.61h |
| 96 | 1.2.4.3 | Correcciones de fallos | 2h | 2017-12-05 22:02 | 2017-12-06 00:03 | 95 | 1d |  | David Medina [20%]; Eduardo Torrado [40%]; Yesid [40%] | 1h |
| 97 | 1.3 | **Tercera iteraccion** | 9d | 2017-12-06 00:03 | 2017-12-19 01:05 | 56 | 0d |  |  | 51.4h |
| 98 | 1.3.1 | **Planeacion** | 1d | 2017-12-06 00:03 | 2017-12-07 00:59 |  | 1d | 0d |  | 3.71h |
| 99 | 1.3.1.1 | Definicion de requisitos | 4h | 2017-12-06 00:03 | 2017-12-06 21:59 |  | 1d | 0d | David Medina [60%]; Eduardo Torrado [30%]; Yesid [10%] | 1.71h |
| 100 | 1.3.1.2 | Afinamiento a los Casos de uso | 2h | 2017-12-06 21:59 | 2017-12-07 00:59 | 99 | 1d |  | David Medina | 2h |
| 101 | 1.3.2 | **Diseño** | 2d | 2017-12-07 00:59 | 2017-12-09 00:59 | 98 | 0d |  |  | 8h |
| 102 | 1.3.2.1 | Diseño Interfaz de Administrador home | 4h | 2017-12-07 00:59 | 2017-12-08 00:59 |  | 1d | 0d | David Medina | 4h |
| 103 | 1.3.2.2 | Diseño de barra lateral | 4h | 2017-12-08 00:59 | 2017-12-09 00:59 | 102 | 0d |  | David Medina | 4h |

| ID | WBS | Task | Duration | Start | Finish | Predecessors | Total slack | Resources | Work |
| --- | --- | --- | --- | --- | --- | --- | --- | --- | --- |
| 104 | 1.3.3 | **Construccion** | 5d | 2017-12-09 00:59 | 2017-12-18 00:04 | 101 | 0d |  | 35h |
| 105 | 1.3.3.1 | Desarrollo pagina principal - home | 12h | 2017-12-09 00:59 | 2017-12-12 21:02 |  | 0d | Yesid | 12h |
| 106 | 1.3.3.2 | **vista tablas** | 1.5d | 2017-12-13 13:00 | 2017-12-14 19:00 | 105 | 0d |  | 8h |
| 107 | 1.3.3.2.1 | rango | 2h | 2017-12-13 13:00 | 2017-12-13 15:00 |  | 0d | Eduardo Torrado | 2h |
| 108 | 1.3.3.2.2 | categoria | 2h | 2017-12-13 17:00 | 2017-12-13 19:00 | 107 | 0d | Eduardo Torrado | 2h |
| 109 | 1.3.3.2.3 | usuarios | 2h | 2017-12-14 13:00 | 2017-12-14 15:00 | 108 | 0d | Eduardo Torrado | 2h |
| 110 | 1.3.3.2.4 | moderadores | 2h | 2017-12-14 17:00 | 2017-12-14 19:00 | 109 | 0d | Eduardo Torrado | 2h |
| 111 | 1.3.3.3 | **vista contacto** | 1d | 2017-12-14 21:00 | 2017-12-18 00:04 | 106 | 0d |  | 15h |
| 112 | 1.3.3.3.1 | mensajes leidos | 10h | 2017-12-14 21:00 | 2017-12-16 23:02 |  | 0d | Yesid | 10h |
| 113 | 1.3.3.3.2 | nuevos mensajes | 5h | 2017-12-16 23:02 | 2017-12-18 00:04 | 112 | 0d | Yesid | 5h |
| 114 | 1.3.4 | **Entrega** | 1d | 2017-12-18 00:04 | 2017-12-19 01:05 | 104 | 0d |  | 4.68h |
| 115 | 1.3.4.1 | comprobacion de resultados | 4h | 2017-12-18 00:04 | 2017-12-18 17:04 |  | 0d | David Medina [40%]; Eduardo Torrado [30%]; Yesid [30%] | 1.67h |
| 116 | 1.3.4.2 | generacion de errores o fallos | 4h | 2017-12-18 17:04 | 2017-12-18 23:04 | 115 | 0d | David Medina [40%]; Eduardo Torrado [30%]; Yesid [30%] | 2h |
| 117 | 1.3.4.3 | Correcciones de fallos | 2h | 2017-12-18 23:04 | 2017-12-19 01:05 | 116 | 0d | David Medina [40%]; Eduardo Torrado [30%]; Yesid [30%] | 1.01h |
